# T12ProjectSchedule_V3

How a schedule from MS Project changed from version to version. A marks actual dates.

## Version 1 (saved 2015-04-01)

Note of the change: WPR Folder

| ID | WBS | Task | Duration | Start | Finish | Predecessors | Total float |
| --- | --- | --- | --- | --- | --- | --- | --- |
| 1 | 1 | **MSGT Experiment** | 45d | 2015-03-24 | 2015-05-14 |  | 0d |
| 2 | 1.1 | **Design MSGT** | 17d | 2015-03-24 | 2015-04-12 |  |  |
| 3 |  | Create Board Schematic | 7d | 2015-03-24 | 2015-03-31 |  |  |
| 4 |  | Revise Board Schematic | 4d | 2015-03-31 | 2015-04-03 | 3 |  |
| 5 |  | Create Board Layout | 5d | 2015-04-03 | 2015-04-08 | 4 |  |
| 6 |  | Revise Board Layout | 5d | 2015-04-08 | 2015-04-12 | 5 |  |
| 7 |  | No ERC or DRC errors | 0d | 2015-04-13 | 2015-04-13 | 6 |  |
| 8 |  | Write MSGT Experiment Manual | 10d | 2015-03-24 | 2015-04-03 |  |  |
| 9 |  | Write MSGT Instructors Manual | 5d | 2015-05-10 | 2015-05-14 | 15, 35, 55 |  |
| 10 | 1.4 | **Testplan MSGT** | 13d | 2015-04-13 | 2015-04-27 |  |  |
| 11 |  | Create Testplan | 7d | 2015-04-13 | 2015-04-19 | 6, 26, 46 |  |
| 12 |  | Revise Testplan | 7d | 2015-04-20 | 2015-04-27 | 11 | 0d |
| 13 |  | Send to PCB MFGR | 0d | 2015-04-13 | 2015-04-13 | 6, 26, 46 |  |
| 14 |  | Receive board from FAB | 0d | 2015-04-23 | 2015-04-23 |  |  |
| 15 | 1.7 | **MSGT Board Bring Up** | 7d | 2015-04-23 | 2015-04-30 |  |  |
| 16 |  | Check board fab (shorts) | 1d | 2015-04-23 | 2015-04-23 |  | 0d |
| 17 |  | Stuff board (solder parts) | 1d | 2015-04-24 | 2015-04-24 | 16 | 0d |
| 18 |  | check solder (short, etc) | 1d | 2015-04-25 | 2015-04-25 | 17 | 0d |
| 19 |  | test basic functionality | 1d | 2015-04-27 | 2015-04-27 | 18 | 0d |
| 20 |  | Debug any issues | 3d | 2015-04-28 | 2015-04-30 | 19 | 0d |
| 21 | 2 | **ISI Experiment** | 45d | 2015-03-24 | 2015-05-14 |  | 0d |
| 22 | 2.1 | **Design ISI Experiment** | 17d | 2015-03-24 | 2015-04-12 |  |  |
| 23 |  | Create Board Schematic | 7d | 2015-03-24 | 2015-03-31 |  |  |
| 24 |  | Revise Board Schematic | 3d | 2015-03-31 | 2015-04-02 | 23 |  |
| 25 |  | Create Board Layout | 5d | 2015-04-03 | 2015-04-08 | 24 |  |
| 26 |  | Revise Board Layout | 5d | 2015-04-08 | 2015-04-12 | 25 |  |
| 27 |  | No ERC or DRC errors | 0d | 2015-04-13 | 2015-04-13 | 6 |  |
| 28 |  | Write Experiment Manual ISI | 10d | 2015-03-24 | 2015-04-03 |  |  |
| 29 |  | Write Instructors Manual ISI | 5d | 2015-05-10 | 2015-05-14 | 35, 55 |  |
| 30 | 2.4 | **Testplan ISI** | 10d | 2015-04-13 | 2015-04-23 |  |  |
| 31 |  | Create Testplan | 5d | 2015-04-13 | 2015-04-17 | 6, 26, 46 |  |
| 32 |  | Revise Testplan | 5d | 2015-04-18 | 2015-04-23 | 31 |  |
| 33 |  | Send to PCB MFGR | 0d | 2015-04-13 | 2015-04-13 | 6, 26, 46 |  |
| 34 |  | Receive board from FAB | 0d | 2015-04-23 | 2015-04-23 |  |  |
| 35 | 3 | **ISI Board Bring Up** | 6d | 2015-05-04 | 2015-05-09 |  |  |
| 36 |  | Check board fab (shorts) | 1d | 2015-05-04 | 2015-05-04 | 34 |  |
| 37 |  | Stuff board (solder parts) | 1d | 2015-05-05 | 2015-05-05 | 36 |  |
| 38 |  | check solder (short, etc) | 1d | 2015-05-06 | 2015-05-06 | 37 |  |
| 39 |  | test basic functionality | 1d | 2015-05-07 | 2015-05-07 | 38 |  |
| 40 |  | Debug any issues | 2d | 2015-05-08 | 2015-05-09 | 39 |  |
| 41 | 4 | **Connector experiment** | 45d | 2015-03-24 | 2015-05-14 |  | 0d |
| 42 | 4.1 | **Design Connector Experiment** | 17d | 2015-03-24 | 2015-04-12 |  |  |
| 43 |  | Create Board Schematic | 7d | 2015-03-24 | 2015-03-31 |  |  |
| 44 |  | Revise Board Schematic | 3d | 2015-03-31 | 2015-04-02 | 43 |  |
| 45 |  | Create Board Layout | 5d | 2015-04-03 | 2015-04-08 | 44 |  |
| 46 |  | Revise Board Layout | 5d | 2015-04-08 | 2015-04-12 | 45 |  |
| 47 |  | No ERC or DRC errors | 0d | 2015-04-13 | 2015-04-13 | 6 |  |
| 48 |  | Write Experiment Manual Connector | 10d | 2015-03-24 | 2015-04-03 |  |  |
| 49 |  | Write Instructors Manual Connector | 5d | 2015-05-10 | 2015-05-14 | 15, 35, 55 |  |
| 50 | 4.4 | **Testplan Connector** | 12d | 2015-04-13 | 2015-04-26 |  |  |
| 51 |  | Create Testplan | 7d | 2015-04-13 | 2015-04-19 | 6, 26, 46 |  |
| 52 |  | Revise Testplan | 7d | 2015-04-20 | 2015-04-26 | 51 |  |
| 53 |  | Send to PCB MFGR | 0d | 2015-04-13 | 2015-04-13 | 6, 26, 46 |  |
| 54 |  | Receive board from FAB | 0d | 2015-04-23 | 2015-04-23 |  |  |
| 55 | 4.7 | **Connector Board Bring Up** | 6d | 2015-05-04 | 2015-05-09 |  |  |
| 56 |  | Check board fab (shorts) | 1d | 2015-05-04 | 2015-05-04 | 54 |  |
| 57 |  | Stuff board (solder parts) | 1d | 2015-05-05 | 2015-05-05 | 56 |  |
| 58 |  | check solder (short, etc) | 1d | 2015-05-06 | 2015-05-06 | 57 |  |
| 59 |  | test basic functionality | 1d | 2015-05-07 | 2015-05-07 | 58 |  |
| 60 |  | Debug any issues | 2d | 2015-05-08 | 2015-05-09 | 59 |  |
| 61 | 5 | **Board Testing** | 15d | 2015-05-10 | 2015-05-26 |  |  |
| 62 |  | Alpha Test | 3d | 2015-05-10 | 2015-05-12 | 35, 55, 19 |  |
| 63 |  | Review/Revise | 1d | 2015-05-13 | 2015-05-13 | 62 |  |
| 64 |  | Beta Testing | 5d | 2015-05-19 | 2015-05-23 | 66 |  |
| 65 |  | Sponsor Testing | 3d | 2015-05-24 | 2015-05-26 | 64 |  |
| 66 |  | Possible Board Respin | 5d | 2015-05-14 | 2015-05-19 | 63 |  |
| 67 | 7 | **Prepare Presentation** | 6d | 2015-05-27 | 2015-06-02 |  | 0d |
| 68 | 7.1 | **Create Poster** | 6d | 2015-05-27 | 2015-06-02 | 65 |  |
| 69 |  | Brainstorm Poster | 1d | 2015-05-27 | 2015-05-27 | 62 |  |
| 70 |  | Create Poster | 2d | 2015-05-28 | 2015-05-29 | 69 |  |

| ID | Task | Duration | Start | Finish | Predecessors |
| --- | --- | --- | --- | --- | --- |
| 71 | Review Poster (group) | 1d | 2015-05-30 | 2015-05-30 | 70 |
| 72 | Advisor review poster | 3d | 2015-05-31 | 2015-06-02 | 71 |
| 73 | Practice Presentation | 1d | 2015-06-01 | 2015-06-01 |  |
| 74 | Presentation | 0d | 2015-06-05 | 2015-06-05 | 72 |

## Version 2 (saved 2015-04-06)

Note of the change: Updated Schedule

Last finish stays 2015-06-05.

Changed:

| ID | Task | Start | Finish | Duration |
| --- | --- | --- | --- | --- |
| 2 | **Design MSGT** |  | 2015-04-12 → 2015-04-13 (+1d) | 17d → 18d |
| 4 | Revise Board Schematic | 2015-03-31 → 2015-04-01 (+1d) | 2015-04-03 → 2015-04-07 (+4d) | 4d → 6d |
| 5 | Create Board Layout | 2015-04-03 → 2015-04-08 (+5d) | 2015-04-08 → 2015-04-09 (+1d) | 5d → 2d |
| 6 | Revise Board Layout | 2015-04-08 → 2015-04-10 (+2d) |  | 5d → 3d |
| 22 | **Design ISI Experiment** |  | 2015-04-12 → 2015-04-13 (+1d) | 17d → 18d |
| 42 | **Design Connector Experiment** |  | 2015-04-12 → 2015-04-13 (+1d) | 17d → 18d |
| 50 | **Testplan Connector** |  |  | 12d → 13d |
